# Release 1.0 Plan

Schedule from Planner, 2006-07-24 to 2006-09-29.

## Calendars

- Default: Mon-Fri 08:00-12:00, 13:00-17:00; Sat-Sun off.

## Schedule

| ID | WBS | Task | Start | Finish | Predecessors | Complete | Work |
| --- | --- | --- | --- | --- | --- | --- | --- |
| 1 | 1 | **Release 1.0** | 2006-07-24 | 2006-09-29 |  |  | 400h |
| 2 | 1.1 | **Misc Stuff** | 2006-07-24 | 2006-08-02 |  |  | 64h |
| 3 | 1.1.1 | Fixing group schemas, problems with changes to migrate php code etc. | 2006-07-24 | 2006-07-25 |  |  | 16h |
| 4 | 1.1.2 | Discussing, clarifying requirements | 2006-07-26 | 2006-07-26 | 3 |  | 8h |
| 5 | 1.1.3 | Fixing problems due to unexpected central, identity server changes | 2006-07-27 | 2006-07-28 | 4 |  | 16h |
| 6 | 1.1.4 | PHP e_strict compliance | 2006-07-31 | 2006-08-02 | 5 |  | 24h |
| 7 | 1.2 | **Patient List (RLS)** | 2006-08-03 | 2006-08-10 | 6 |  | 48h |
| 8 | 1.2.1 | Remove PINs and Tracking Numbers | 2006-08-03 | 2006-08-07 |  |  | 24h |
| 9 | 1.2.2 | Fetching Registry Address from Account | 2006-08-08 | 2006-08-08 | 8 |  | 8h |
| 10 | 1.2.3 | User Specific Filters | 2006-08-09 | 2006-08-09 | 9 |  | 8h |
| 11 | 1.2.4 | User Specific filter configuration/save in RLS | 2006-08-10 | 2006-08-10 | 10 |  | 8h |
| 12 | 1.3 | **Account Merge Phase 1** | 2006-08-11 | 2006-08-11 | 11 |  | 8h |
| 13 | 1.3.1 | db cleanup and merge | 2006-08-11 | 2006-08-11 |  |  | 8h |
| 14 | 1.4 | **ToDir** | 2006-08-14 | 2006-08-17 | 13 |  | 32h |
| 15 | 1.4.1 | Add Icons based on entry types | 2006-08-14 | 2006-08-14 |  | 80% | 8h |
| 16 | 1.4.2 | FireFox Client Support | 2006-08-15 | 2006-08-15 | 15 |  | 8h |
| 17 | 1.4.3 | Display of Assertions (todir account integration) | 2006-08-16 | 2006-08-17 | 16 |  | 16h |
| 18 | 1.5 | Merging Group Schemas | 2006-08-18 | 2006-08-22 | 17 |  | 24h |
| 19 | 1.6 | **CCR Merge** | 2006-08-23 | 2006-09-11 | 18 |  | 112h |
| 20 | 1.6.1 | **Account Merge Enhancements** | 2006-08-23 | 2006-08-24 |  |  | 16h |
| 21 | 1.6.1.1 | DB Design, UI updates | 2006-08-23 | 2006-08-23 |  |  | 8h |
| 22 | 1.6.1.2 | WS Enhancements to flag required merges | 2006-08-24 | 2006-08-24 | 21 |  | 8h |
| 23 | 1.6.2 | Core Merge Algorithm | 2006-08-25 | 2006-08-31 | 22 |  | 40h |
| 24 | 1.6.3 | **Manual Merge Interface** | 2006-09-01 | 2006-09-11 | 23 |  | 56h |
| 25 | 1.6.3.1 | Body Section Merge | 2006-09-01 | 2006-09-07 |  |  | 40h |
| 26 | 1.6.3.2 | Patient Information Merge | 2006-09-08 | 2006-09-11 | 25 |  | 16h |

| ID | WBS | Task | Start | Finish | Predecessors | Work |
| --- | --- | --- | --- | --- | --- | --- |
| 27 | 1.7 | **Viewer** | 2006-09-12 | 2006-09-15 | 26 | 32h |
| 28 | 1.7.1 | Mantis Bugs | 2006-09-12 | 2006-09-13 |  | 16h |
| 29 | 1.7.2 | Multiple Gateway support | 2006-09-14 | 2006-09-15 | 28 | 16h |
| 30 | 1.8 | **Account Page** | 2006-09-18 | 2006-09-27 | 29 | 64h |
| 31 | 1.8.1 | Visual cleanup | 2006-09-18 | 2006-09-19 |  | 16h |
| 32 | 1.8.2 | Pinless-Access List | 2006-09-20 | 2006-09-20 | 31 | 8h |
| 33 | 1.8.3 | Practice Administration | 2006-09-21 | 2006-09-22 | 32 | 16h |
| 34 | 1.8.4 | Audit Log | 2006-09-25 | 2006-09-25 | 33 | 8h |
| 35 | 1.8.5 | Ownership type, verification, status (1.9.2) | 2006-09-26 | 2006-09-26 | 34 | 8h |
| 36 | 1.8.6 | Account details management (Address, recovery passphrase) | 2006-09-27 | 2006-09-27 | 35 | 8h |
| 37 | 1.9 | Build | 2006-09-28 | 2006-09-28 | 36 | 8h |
| 38 | 1.10 | Test and Monitor | 2006-09-29 | 2006-09-29 | 37 | 8h |
